# Sidechains_Plan

Schedule from MS Project, 2018-02-19 to 2018-04-25, A marks actual dates.

## Calendars

- Standard: Mon-Fri 08:00-12:00, 13:00-17:00; Sat-Sun off.

## Resources

| Resource |
| --- |
| 1 |
| Carlton |
| Matt |
| Kevin |

## Schedule

| ID | WBS | Task | Type | Duration | Start | Finish | Predecessors | Complete | Remaining | Total slack | Resources | Work | Actual work |
| --- | --- | --- | --- | --- | --- | --- | --- | --- | --- | --- | --- | --- | --- |
| 1 | 1 | **Create a Blockchain** |  | 6d | 2018-02-19 A | 2018-02-26 A |  | 100% |  |  |  | 48h | 48h |
| 2 | 1.1 | TestNet | manual | 2d | 2018-02-19 A | 2018-02-20 A |  | 100% |  |  | Carlton | 16h | 16h |
| 3 | 1.2 | RegTest | manual | 1d | 2018-02-21 A | 2018-02-21 A | 2 | 100% |  |  | Carlton | 8h | 8h |
| 4 | 1.3 | MainNet | manual | 3d | 2018-02-22 A | 2018-02-26 A | 3 | 100% |  |  | Carlton | 24h | 24h |
| 5 | 2 | Mine Blockchain | manual | 3d | 2018-02-27 A | 2018-03-01 A | 1 | 100% |  |  | Carlton | 24h | 24h |
| 6 | 3 | **Create a Sidechain Skeleton** |  | 3d | 2018-02-27 A | 2018-03-01 A | 1 | 100% |  |  |  | 24h | 24h |
| 7 | 3.1 | TestNet | manual | 1d | 2018-02-27 A | 2018-02-27 A | 4 | 100% |  |  | Carlton | 8h | 8h |
| 8 | 3.2 | RegTest | manual | 1d | 2018-02-28 A | 2018-02-28 A | 7 | 100% |  |  | Carlton | 8h | 8h |
| 9 | 3.3 | MainNet | manual | 1d | 2018-03-01 A | 2018-03-01 A | 8 | 100% |  |  | Carlton | 8h | 8h |
| 10 | 4 | Mine Sidechain | manual | 3d | 2018-03-02 A | 2018-03-06 A | 6 | 100% |  |  | Carlton | 24h | 24h |
| 11 | 5 | **Other** |  | 5d | 2018-03-08 | 2018-03-14 |  |  |  | 0d |  | 64h |  |
| 12 | 5.1 | New Network | manual | 2d | 2018-03-08 | 2018-03-09 |  |  |  |  | Carlton | 16h |  |
| 13 | 5.2 | Automate Integration Testing | manual | 3d | 2018-03-08 | 2018-03-12 |  |  |  |  | Carlton | 24h |  |
| 14 | 5.3 | Refactor into One Feature | manual | 3d | 2018-03-12 | 2018-03-14 |  |  |  |  | Matt | 24h |  |
| 15 | 6 | **Blockchain Generation API** |  | 11d | 2018-02-23 A | 2018-03-09 |  | 81% | 2.1d | 0d |  | 88h | 71.2h |
| 16 | 6.1 | API and unit test | manual | 5d | 2018-02-23 A | 2018-03-01 A |  | 100% |  |  | Matt | 40h | 40h |
| 17 | 6.2 | PowerShell Commands | manual | 6d | 2018-03-02 A | 2018-03-09 | 16 | 65% | 2.1d |  | Matt | 48h | 31.2h |
| 18 | 7 | **Build Packages** |  | 3d | 2018-03-07 | 2018-03-09 | 1, 5, 6, 10 |  |  | 0d |  |  |  |
| 19 | 7.1 | Windows | manual | 3d | 2018-03-07 | 2018-03-09 | 1, 5, 6, 10 |  |  |  |  |  |  |
| 20 | 7.2 | Linux | manual | 3d | 2018-03-07 | 2018-03-09 | 1, 5, 6, 10 |  |  |  |  |  |  |
| 21 | 7.3 | Mac | manual | 3d | 2018-03-07 | 2018-03-09 | 1, 5, 6, 10 |  |  |  |  |  |  |
| 22 | 8 | **Wallet UI Support** |  | 13d | 2018-03-12 | 2018-03-28 | 1, 5, 6, 10, 18 |  |  | 0d |  | 104h |  |
| 23 | 8.1 | Design | manual | 3d | 2018-03-12 | 2018-03-14 | 1, 5, 6, 10, 18 |  |  |  | Carlton | 24h |  |
| 24 | 8.2 | Support Dual Currencies | manual | 10d | 2018-03-15 | 2018-03-28 | 23 |  |  |  | Matt | 80h |  |
| 25 | 9 | Blockchain Generation Complete | milestone, manual | 0d | 2018-03-29 | 2018-03-29 | 1, 5, 6, 10, 18, 22 |  |  |  |  |  |  |

| ID | WBS | Task | Type | Duration | Start | Finish | Predecessors | Complete | Remaining | Total slack | Resources | Work | Actual work |
| --- | --- | --- | --- | --- | --- | --- | --- | --- | --- | --- | --- | --- | --- |
| 26 | 10 | **Customizations** |  | 18d | 2018-03-29 | 2018-04-23 |  |  |  | 0d |  | 144h |  |
| 27 | 10.1 | Consensus Rules | manual | 5d | 2018-03-29 | 2018-04-04 | 25 |  |  |  | Carlton | 40h |  |
| 28 | 10.2 | Other | manual | 13d | 2018-04-05 | 2018-04-23 | 27 |  |  |  | Carlton | 104h |  |
| 29 | 11 | **Sidechains** |  | 38d | 2018-03-02 A | 2018-04-25 |  | 2% | 37.2d | 0d |  | 2340h | 37.6h |
| 30 | 11.1 | Sidechains Framework | manual | 30d | 2018-03-02 A | 2018-04-12 | 6 | 5% | 28.5d |  | Kevin; Carlton | 468h | 12h |
| 31 | 11.2 | Fund a Sidechain | manual | 8d | 2018-03-02 A | 2018-03-13 | 6 | 20% | 6.4d |  | Carlton; Kevin | 128h | 25.6h |
| 32 | 11.3 | Receive Funds | manual | 18d | 2018-03-02 | 2018-03-27 | 6 |  |  |  | Carlton; Kevin | 288h |  |
| 33 | 11.4 | Mint Coins | manual | 24d | 2018-03-02 | 2018-04-04 | 6 |  |  |  | Carlton; Kevin | 384h |  |
| 34 | 11.5 | Transfer Out of Chain | manual | 30d | 2018-03-02 | 2018-04-12 | 6 |  |  |  | Carlton; Kevin | 480h |  |
| 35 | 11.6 | Transfer into Mainchain | manual | 37d | 2018-03-02 | 2018-04-23 | 6 |  |  |  | Carlton; Kevin | 592h |  |
| 36 | 11.7 | Sidechains Phase 1 Complete | milestone, manual | 0d | 2018-04-25 | 2018-04-25 | 30, 31, 32, 33, 34, 35 |  |  |  |  |  |  |
